# pal crm

Schedule from MS Project, 2026-01-05 to 2026-09-14, A marks actual dates.

## Calendars

- Standard: Mon-Fri 08:00-12:00, 13:00-17:00; Sat-Sun off.

## Resources

| Resource |
| --- |
| VIPROS |
| PAL Customer Service |
| Stakeholder Patrick |
| PAL Underwriting |
| PAL Marketing |
| PAL Wei |

## Schedule

| ID | WBS | Task | Type | Duration | Start | Finish | Predecessors | Complete | Remaining | Actual start | Total slack | Resources | Work | Actual work |
| --- | --- | --- | --- | --- | --- | --- | --- | --- | --- | --- | --- | --- | --- | --- |
| 1 | 1 | **PAL CRM Redevelpment Project** |  | 181d? | 2026-01-05 A | 2026-09-14 |  | 35% | 117.41d? |  | 0d | PAL Customer Service; PAL Marketing; PAL Underwriting; PAL Wei; Stakeholder Patrick; VIPROS | 22672h | 5507.2h |
| 2 | 1.1 | **Project Initiation & Planning** |  | 11d | 2026-01-05 A | 2026-01-18 A |  | 100% |  |  |  | PAL Customer Service; PAL Marketing; PAL Underwriting; PAL Wei; Stakeholder Patrick; VIPROS | 1112h | 1112h |
| 3 | 1.1.1 | Stakeholder alignment and kickoff meetings | manual | 5d | 2026-01-05 A | 2026-01-09 A |  | 100% |  |  |  | PAL Wei; Stakeholder Patrick; VIPROS | 120h | 120h |
| 4 | 1.1.2 | Define scope, objectives, and success criteria | manual | 5d | 2026-01-06 A | 2026-01-12 A |  | 100% |  |  |  | PAL Wei; Stakeholder Patrick; VIPROS | 120h | 120h |
| 5 | 1.1.3 | Assign project team and department leads | manual | 5d | 2026-01-10 A | 2026-01-15 A |  | 100% |  |  |  | PAL Customer Service; PAL Marketing; PAL Underwriting; PAL Wei; Stakeholder Patrick; VIPROS | 240h | 240h |
| 6 | 1.1.4 | Finalize project governance and RACI | manual | 5d | 2026-01-13 A | 2026-01-18 A |  | 100% |  |  |  | PAL Wei; VIPROS | 80h | 80h |
| 7 | 1.1.5 | Kickoff Complete | manual | 1d | 2026-01-18 A | 2026-01-18 A |  | 100% |  |  |  | PAL Wei; Stakeholder Patrick; VIPROS | 24h | 24h |
| 8 | 1.2 | **Requirements Validation & Architecture** |  | 58d | 2026-01-19 A | 2026-04-08 A | 2 | 100% |  |  |  | PAL Customer Service; PAL Underwriting; PAL Wei; VIPROS | 4128h | 4128h |
| 9 | 1.2.1 | Validate business requirements by department | manual | 31d | 2026-01-19 A | 2026-02-28 A |  | 100% |  |  |  | PAL Customer Service; PAL Marketing; PAL Underwriting; PAL Wei; VIPROS | 1240h | 1240h |
| 10 | 1.2.2 | Finalize data model and entity definitions | manual | 32d | 2026-02-01 A | 2026-03-15 A |  | 100% |  |  |  | PAL Wei; VIPROS | 512h | 512h |
| 11 | 1.2.3 | Define integration points | manual | 12d | 2026-03-01 A | 2026-03-15 A |  | 100% |  |  |  | PAL Wei; VIPROS | 192h | 192h |
| 12 | 1.2.4 | Complete solution architecture | manual | 19d | 2026-03-14 A | 2026-04-08 A |  | 100% |  |  |  | PAL Wei; VIPROS | 304h | 304h |
| 13 | 1.2.5 | Architecture Approved | manual | 1d | 2026-04-08 A | 2026-04-08 A |  | 100% |  |  |  | PAL Wei; Stakeholder Patrick; VIPROS | 24h | 24h |
| 14 | 1.3 | **Configuration & Customization** |  | 54d? | 2026-04-09 | 2026-06-23 | 8 | 1% | 53.23d? | 2026-03-27 |  | PAL Wei; VIPROS | 3320h | 27.2h |
| 15 | 1.3.1 | **Configure CRM modules and entities** |  | 19d | 2026-04-09 | 2026-05-05 |  | 5% | 17.96d | 2026-03-27 |  | VIPROS; PAL Wei | 800h | 27.2h |
| 16 | 1.3.1.1 | Entities Customizations (Account, Contact, Policy, Case Open) | manual | 2d | 2026-03-27 A | 2026-03-30 |  | 85% | 0.3d |  |  | VIPROS; PAL Wei | 32h | 27.2h |
| 17 | 1.3.1.2 | Custom Development (Connections) | manual | 5d | 2026-03-30 | 2026-04-03 |  |  |  |  |  | PAL Wei; VIPROS | 80h |  |
| 18 | 1.3.1.3 | Custom Development (Products) | manual | 12d | 2026-03-30 | 2026-04-14 |  |  |  |  |  | PAL Wei; VIPROS | 192h |  |
| 19 | 1.3.1.4 | Custom Development (Net Worth) | manual | 12d | 2026-03-30 | 2026-04-14 |  |  |  |  |  | PAL Wei; VIPROS | 192h |  |
| 20 | 1.3.2 | Build application forms and workflows | manual | 23d | 2026-04-20 | 2026-05-20 |  |  |  |  |  | PAL Wei; VIPROS | 368h |  |
| 21 | 1.3.3 | Develop dashboards and notifications | manual | 20d | 2026-05-11 | 2026-06-05 |  |  |  |  |  | PAL Wei; VIPROS | 320h |  |
| 22 | 1.3.4 | Configure document management | manual | 19d | 2026-05-15 | 2026-06-10 |  |  |  |  |  | PAL Wei; Stakeholder Patrick; VIPROS | 456h |  |
| 23 | 1.3.5 | Integrations and automation build | manual | 23d | 2026-05-20 | 2026-06-19 |  |  |  |  |  | PAL Wei; VIPROS | 368h |  |
| 24 | 1.3.6 | Configuration review and sign-off | manual | 3d | 2026-06-19 | 2026-06-23 |  |  |  |  |  | PAL Customer Service; PAL Marketing; PAL Underwriting; PAL Wei; VIPROS | 120h |  |
| 25 | 1.3.7 | Config Complete | manual | 1d | 2026-06-23 | 2026-06-23 |  |  |  |  |  | PAL Wei; Stakeholder Patrick; VIPROS | 24h |  |

| ID | WBS | Task | Type | Duration | Start | Finish | Predecessors | Resources | Work |
| --- | --- | --- | --- | --- | --- | --- | --- | --- | --- |
| 26 | 1.4 | **Data Migration & Cleansing** |  | 12d | 2026-06-24 | 2026-07-09 | 14 | PAL Customer Service; PAL Marketing; PAL Underwriting; PAL Wei; VIPROS | 832h |
| 27 | 1.4.1 | Legacy data inventory and profiling | manual | 4d | 2026-06-24 | 2026-06-28 |  | PAL Customer Service; PAL Underwriting; PAL Wei | 96h |
| 28 | 1.4.2 | Data cleansing and mapping | manual | 5d | 2026-06-29 | 2026-07-03 |  | PAL Wei; VIPROS | 80h |
| 29 | 1.4.3 | Execute migration (mock + final) | manual | 3d | 2026-07-02 | 2026-07-06 |  | VIPROS | 24h |
| 30 | 1.4.4 | Validate migrated records and remediate | manual | 4d | 2026-07-06 | 2026-07-09 |  | PAL Customer Service; PAL Marketing; PAL Underwriting; PAL Wei | 128h |
| 31 | 1.4.5 | Migration Complete | manual | 1d | 2026-07-09 | 2026-07-09 |  | PAL Wei; Stakeholder Patrick; VIPROS | 24h |
| 32 | 1.5 | **Reporting & Data Quality** |  | 20d | 2026-07-09 | 2026-08-05 | 26 | PAL Customer Service; PAL Underwriting; PAL Wei; Stakeholder Patrick; VIPROS | 1680h |
| 33 | 1.5.1 | Build department dashboards | manual | 10d | 2026-07-09 | 2026-07-22 |  | PAL Wei; VIPROS | 160h |
| 34 | 1.5.2 | Reporting validation with stakeholders | manual | 9d | 2026-07-20 | 2026-07-30 |  | PAL Customer Service; PAL Marketing; PAL Underwriting; PAL Wei; Stakeholder Patrick | 360h |
| 35 | 1.5.3 | Implement data quality monitoring | manual | 7d | 2026-07-24 | 2026-08-03 |  | PAL Wei; Stakeholder Patrick; VIPROS | 168h |
| 36 | 1.5.4 | Develop remediation tools and processes | manual | 7d | 2026-07-28 | 2026-08-05 |  | PAL Wei; Stakeholder Patrick; VIPROS | 168h |
| 37 | 1.5.5 | Reports Validated | manual | 1d | 2026-07-05 | 2026-07-05 |  | PAL Wei; Stakeholder Patrick; VIPROS | 24h |
| 38 | 1.6 | **UAT & Training** |  | 16d | 2026-08-06 | 2026-08-27 | 32 | PAL Customer Service; PAL Marketing; PAL Underwriting; PAL Wei; Stakeholder Patrick; VIPROS | 1640h |
| 39 | 1.6.1 | Prepare UAT test scripts and environments | manual | 3d | 2026-08-06 | 2026-08-10 |  | PAL Wei; VIPROS | 48h |
| 40 | 1.6.2 | Execute user acceptance testing (by dept) | manual | 9d | 2026-08-10 | 2026-08-20 |  | PAL Customer Service; PAL Marketing; PAL Underwriting; PAL Wei; Stakeholder Patrick | 360h |
| 41 | 1.6.3 | Defect resolution and retesting | manual | 5d | 2026-08-14 | 2026-08-20 |  | PAL Wei; VIPROS | 80h |
| 42 | 1.6.4 | Department-specific training delivery | manual | 6d | 2026-08-18 | 2026-08-25 |  | PAL Customer Service; PAL Marketing; PAL Underwriting; PAL Wei; VIPROS | 240h |
| 43 | 1.6.5 | Change management support and sign-off | manual | 5d | 2026-08-21 | 2026-08-27 |  | PAL Wei; Stakeholder Patrick; VIPROS | 120h |
| 44 | 1.6.6 | UAT Complete | manual | 1d | 2026-08-27 | 2026-08-27 |  | PAL Wei; Stakeholder Patrick; VIPROS | 24h |
| 45 | 1.7 | **Go-Live & Support** |  | 13d | 2026-08-27 | 2026-09-14 | 38 | PAL Customer Service; PAL Marketing; PAL Underwriting; PAL Wei; Stakeholder Patrick; VIPROS | 1272h |
| 46 | 1.7.1 | Final cutover preparation and dress rehearsal | manual | 3d | 2026-08-28 | 2026-09-01 |  | PAL Customer Service; PAL Marketing; PAL Underwriting; PAL Wei; Stakeholder Patrick; VIPROS | 144h |
| 47 | 1.7.2 | Execute go-live cutover | manual | 3d | 2026-09-01 | 2026-09-03 |  | PAL Wei; VIPROS | 48h |
| 48 | 1.7.3 | Post-launch issue resolution (hypercare) | manual | 6d | 2026-09-03 | 2026-09-10 |  | PAL Customer Service; PAL Marketing; PAL Underwriting; PAL Wei; VIPROS | 240h |
| 49 | 1.7.4 | Transition to steady-state operations | manual | 3d | 2026-09-08 | 2026-09-10 |  | PAL Wei; VIPROS | 48h |
| 50 | 1.7.5 | Optimization feedback and lessons learned | manual | 3d | 2026-09-10 | 2026-09-14 |  | PAL Customer Service; PAL Marketing; PAL Underwriting; PAL Wei; Stakeholder Patrick; VIPROS | 144h |
| 51 | 1.7.6 | Project Complete | manual | 1d | 2026-09-14 | 2026-09-14 |  | PAL Wei; Stakeholder Patrick; VIPROS | 24h |
